# 二期非车

Schedule from a web Gantt chart, 2025-04-15 to 2025-06-27.
Saturdays and Sundays are off

## Schedule

| ID | WBS | Task | Duration | Start | Finish | Complete | Status |
| --- | --- | --- | --- | --- | --- | --- | --- |
| 2 | 1 | 需求收集 | 12d | 2025-04-15 | 2025-04-30 | 100% | done |
| 3 | 2 | 原型设计 | 8d | 2025-04-21 | 2025-04-30 | 100% | done |
| 4 | 3 | 接口功能拆分设计 | 8d | 2025-04-21 | 2025-04-30 | 100% | done |
| 5 | 4 | 确定所需周边系统 | 3d | 2025-04-28 | 2025-04-30 | 100% | done |
| 6 | 5 | 原型界面绘制 | 8d | 2025-04-21 | 2025-04-30 | 100% | done |
| 7 | 6 | 后端基础架构搭建 | 8d | 2025-05-07 | 2025-05-16 | 100% | done |
| 8 | 7 | 后端权限校验功能接口 | 5d | 2025-05-12 | 2025-05-16 | 100% | done |
| 9 | 8 | 后端分页查询功能接口 | 5d | 2025-05-12 | 2025-05-16 | 100% | done |
| 10 | 9 | 后端机构信息查询接口 | 5d | 2025-05-19 | 2025-05-23 | 100% | done |
| 11 | 10 | 后端任务接收接口 | 5d | 2025-05-19 | 2025-05-23 | 100% | done |
| 12 | 11 | 后端任务解除接口 | 5d | 2025-05-19 | 2025-05-23 | 100% | done |
| 13 | 12 | 影像平台对接 | 5d | 2025-05-26 | 2025-05-30 | 100% | done |
| 14 | 13 | 后端任务提交接口 | 5d | 2025-05-26 | 2025-05-30 | 100% | done |
| 15 | 14 | 后端任务解除暂存接口 | 5d | 2025-05-26 | 2025-05-30 | 100% | done |
| 16 | 15 | 后端详情查看接口 | 10d | 2025-06-02 | 2025-06-13 | 100% | done |
| 17 | 16 | 后端任务新增、更新暂存接口 | 5d | 2025-06-02 | 2025-06-06 | 100% | done |
| 18 | 17 | 后端在保系统接口 | 5d | 2025-06-02 | 2025-06-06 |  | waiting |
| 19 | 18 | 前端报表界面绘制与权限对接 | 5d | 2025-05-12 | 2025-05-16 | 100% | done |
| 20 | 19 | 前端分页界面绘制与分页接口对接 | 10d | 2025-05-12 | 2025-05-23 | 100% |  |
| 21 | 20 | 前端任务接收、放弃接口对接 | 5d | 2025-05-19 | 2025-05-23 | 100% | done |
| 22 | 21 | 前端任务详情页面绘制与接口对接 | 15d | 2025-05-26 | 2025-06-13 |  |  |
| 23 | 22 | 前端风险划分界面绘制与接口对接 | 5d | 2025-05-26 | 2025-05-30 |  | waiting |
| 24 | 23 | 前端任务提交界面与接口对接 | 5d | 2025-06-02 | 2025-06-06 | 100% | done |
| 25 | 24 | 前端影像界面与接口对接 | 5d | 2025-06-09 | 2025-06-13 | 100% | done |
| 26 | 25 | 功能测试 | 5d | 2025-06-16 | 2025-06-20 |  | waiting |
| 27 | 26 | 安全测试 | 5d | 2025-06-16 | 2025-06-20 |  | waiting |
| 28 | 27 | 性能测试 | 5d | 2025-06-16 | 2025-06-20 |  | waiting |
| 29 | 28 | 预上线 | 5d | 2025-06-23 | 2025-06-27 |  | waiting |
